# Лаба3_old

How a schedule from MS Project changed from version to version. A marks actual dates.

## Version 1 (saved 2016-11-27, file Тема8.mpp)

Note of the change: first

| ID | WBS | Task | Duration | Start | Finish | Predecessors | Total float | Constraint |
| --- | --- | --- | --- | --- | --- | --- | --- | --- |
| 1 |  | Начало проекта | 0d | 2016-09-07 | 2016-09-07 |  | 0d |  |
| 2 | 2 | **Выбор системы** | 211.5d | 2016-09-07 | 2017-06-29 |  | 0d |  |
| 3 |  | Изучение рынка бухгалтерских систем | 187.5d | 2016-09-07 | 2017-05-26 | 1 | 7d |  |
| 4 |  | Составление требований к бухгалтерским системам | 42d | 2016-09-07 | 2017-06-06 | 1 | 0d |  |
| 5 |  | Консультации с фирмами-разработчиками | 10d | 2017-06-06 | 2017-06-20 | 3, 4 | 0d |  |
| 6 |  | Принятие окончательного решения | 7d | 2017-06-20 | 2017-06-29 | 5 | 0d |  |
| 7 |  | Выбор завершен | 0d | 2017-06-29 | 2017-06-29 | 6 | 0d |  |
| 8 | 3 | **Приобретение программного обеспечения** | 20d | 2017-06-29 | 2017-07-27 |  | 22d |  |
| 9 |  | Заключение договоров | 0d | 2017-06-29 | 2017-06-29 | 7 | 22d |  |
| 10 |  | Оплата за ПО | 5d | 2017-06-29 | 2017-07-06 | 9 | 22d |  |
| 11 |  | Оформление ПО на баланс | 5d | 2017-07-13 | 2017-07-20 | 10FS+5d | 22d |  |
| 12 |  | Приобретение ПО завершено | 5d | 2017-07-20 | 2017-07-27 | 11 | 22d |  |
| 13 | 4 | **Составление проекта сети** | 18d | 2017-06-29 | 2017-07-25 |  | 0d |  |
| 14 |  | Разработка архитектуры сети | 8d | 2017-06-29 | 2017-07-25 | 7 | 0d |  |
| 15 |  | Проработка физического размещения сети | 0d | 2017-07-25 | 2017-07-25 | 14 | 16d |  |
| 16 |  | Проект сети завершен | 0d | 2017-07-25 | 2017-07-25 | 15 | 16d |  |
| 17 | 5 | **Приобретение компьютеров и сетевого оборудования** | 47d | 2017-06-29 | 2017-09-04 |  | 0d |  |
| 18 |  | Сбор информации о поставщиках и предложениях | 14d | 2017-06-29 | 2017-07-19 | 7 | 4d |  |
| 19 |  | Анализ и выбор поставщика | 5d | 2017-07-25 | 2017-08-01 | 14, 18 | 0d |  |
| 20 |  | Заключение договоров | 0d | 2017-08-01 | 2017-08-01 | 19 | 0d |  |
| 21 |  | Оплата за оборудование | 2d | 2017-08-01 | 2017-08-03 | 20 | 0d |  |
| 22 |  | Оформление оборудования на баланс | 10d | 2017-08-14 | 2017-08-28 | 21FS+7d | 0d |  |
| 23 |  | Приобретение оборудования завершено | 5d | 2017-08-28 | 2017-09-04 | 22 | 0d |  |
| 24 | 6 | **Обучение администратора и программиста** | 11d | 2017-07-27 | 2017-08-11 |  | 16d |  |
| 25 |  | Курсы администраторов | 5d | 2017-08-01 | 2017-08-08 | 16 | 16d |  |
| 26 |  | Курсы программистов | 2d | 2017-07-27 | 2017-07-31 | 12 | 22d |  |
| 27 |  | Сдача сертификационных экзаменов | 3d | 2017-08-08 | 2017-08-11 | 25, 26 | 16d |  |
| 28 |  | Обучение завершено | 0d | 2017-08-11 | 2017-08-11 | 27 | 16d |  |
| 29 | 7 | **Монтаж локальной сети** | 43d | 2017-09-04 | 2017-11-02 |  | 0d |  |
| 30 |  | Установка компьютеров на рабочих местах | 3d | 2017-10-23 | 2017-10-26 | 23, 28 | 0d |  |
| 31 |  | Монтаж кабеля | 21d | 2017-09-04 | 2017-10-03 | 23, 28 | 17d |  |
| 32 |  | Монтаж сетевых устройств | 14d | 2017-10-03 | 2017-10-23 | 23, 28 | 3d |  |
| 33 |  | Подключения кабеля к компьютерам и сетевым устройствам | 5d | 2017-10-26 | 2017-11-02 | 30, 31, 32 | 0d |  |
| 34 |  | Монтаж звершен | 0d | 2017-11-02 | 2017-11-02 | 33 | 0d |  |
| 35 | 8 | **Установка ПО на компьютеры** | 27d | 2017-11-02 | 2017-12-11 |  | 0d |  |
| 36 |  | Установка сервера | 5d | 2017-11-02 | 2017-11-09 | 34 | 0d |  |
| 37 |  | Создание доменов и пользователей | 7d | 2017-11-09 | 2017-11-20 | 36 | 0d |  |
| 38 |  | Проверка и настройка работы сети | 5d | 2017-11-20 | 2017-11-27 | 37 | 0d |  |
| 39 |  | Настройка сети завершена | 10d | 2017-11-27 | 2017-12-11 | 38 | 0d |  |
| 40 | 9 | **Ввод начальных данных** | 105d | 2017-12-11 | 2018-05-07 |  | 0d |  |
| 41 |  | Ввод справочников | 40d | 2017-12-11 | 2018-02-05 | 39 | 0d |  |
| 42 |  | Ввод начальных остатков | 65d | 2018-02-05 | 2018-05-07 | 41 | 0d | start no earlier than 2012-02-01 |
| 43 |  | Ввод начальных данных завершен | 0d | 2018-05-07 | 2018-05-07 | 42 | 41d |  |
| 44 | 10 | **Обучение персонала** | 135d | 2017-12-11 | 2018-06-18 |  | 0d |  |
| 45 |  | Принципы работы системы | 5.5d | 2017-12-11 | 2018-02-07 | 39 | 37.5d |  |
| 46 |  | Изучение интерфейса | 5d | 2018-02-08 | 2018-02-14 | 45 | 37.5d |  |
| 47 |  | Изучение справочников | 20d | 2018-02-15 | 2018-03-14 | 41SS+5d, 46 | 37.5d |  |
| 48 |  | Изучение документов и журналов | 30d | 2018-05-07 | 2018-06-18 | 42, 47 | 0d |  |
| 49 |  | Обучение завершено | 0d | 2018-06-18 | 2018-06-18 | 48 | 0d |  |
| 50 | 11 | **Передача в эксплуатацию** | 11d | 2018-06-18 | 2018-07-03 |  | 0d |  |
| 51 |  | Формирование тестовой отчётности | 5d | 2018-06-18 | 2018-06-25 | 49 | 0d |  |
| 52 |  | Акт ввода в эксплуатацию | 6d | 2018-06-25 | 2018-07-03 | 51 | 0d |  |
| 53 |  | Передача в эксплуатацию завершена | 0d | 2018-07-03 | 2018-07-03 | 52 | 0d |  |
| 54 |  | Конец проекта | 0d | 2018-07-03 | 2018-07-03 | 53 | 0d |  |

## Version 2 (saved 2016-11-27, file Тема8_Фактич.mpp)

Note of the change: first

Last finish stays 2018-07-03.

Changed:

| ID | Task | Start | Finish | Duration | Complete | Total float |
| --- | --- | --- | --- | --- | --- | --- |
| 8 | **Приобретение программного обеспечения** | 2017-06-29 A | 2017-07-27 → 2017-07-28 (+1d) | 20d → 21d | 0% → 39% | 22d → 21d |
| 10 | Оплата за ПО | 2017-06-29 A | 2017-07-06 → 2017-07-07 (+1d) |  | 0% → 99% | 22d → 21.83d |
| 11 | Оформление ПО на баланс | 2017-07-13 → 2017-07-14 A (+1d) | 2017-07-20 → 2017-07-21 (+1d) |  | 0% → 17% | 22d → 21d |
| 12 | Приобретение ПО завершено | 2017-07-20 → 2017-07-21 (+1d) | 2017-07-27 → 2017-07-28 (+1d) |  |  | 22d → 21d |
| 24 | **Обучение администратора и программиста** | 2017-07-27 → 2017-07-28 (+1d) |  | 11d → 10d |  |  |
| 26 | Курсы программистов | 2017-07-27 → 2017-07-28 (+1d) | 2017-07-31 → 2017-08-01 (+1d) |  |  | 22d → 21d |

## Version 3 (saved 2016-11-27, file Тема8_Ресурсы.mpp)

Note of the change: first

Last finish 2018-07-03 → 2018-09-05 (+64d). Complete tasks 0 → 1.

Changed:

| ID | Task | Start | Finish | Duration | Complete | Total float |
| --- | --- | --- | --- | --- | --- | --- |
| 8 | **Приобретение программного обеспечения** | 2017-06-29 A → 2017-06-29 | 2017-07-28 → 2017-07-27 (-1d) | 21d → 20d | 39% → 0% | 21d → 68.5d |
| 10 | Оплата за ПО | 2017-06-29 A → 2017-06-29 | 2017-07-07 → 2017-07-06 (-1d) |  | 99% → 0% | 21.83d → 68.5d |
| 11 | Оформление ПО на баланс | 2017-07-14 A → 2017-07-13 (-1d) | 2017-07-21 → 2017-07-20 (-1d) |  | 17% → 0% | 21d → 68.5d |
| 12 | Приобретение ПО завершено | 2017-07-21 → 2017-07-20 (-1d) | 2017-07-28 → 2017-07-27 (-1d) |  |  | 21d → 68.5d |
| 13 | **Составление проекта сети** |  | 2017-07-25 → 2017-07-05 (-20d) | 18d → 4.5d |  |  |
| 14 | Разработка архитектуры сети |  | 2017-07-25 → 2017-07-05 (-20d) | 8d → 4.5d |  |  |
| 15 | Проработка физического размещения сети | 2017-07-25 → 2017-07-05 (-20d) | 2017-07-25 → 2017-07-05 (-20d) |  |  | 16d → 0d |
| 16 | Проект сети завершен | 2017-07-25 → 2017-07-05 (-20d) | 2017-07-25 → 2017-07-05 (-20d) |  |  | 16d → 0d |
| 17 | **Приобретение компьютеров и сетевого оборудования** | 2017-06-29 A |  |  | 0% → 39% | 0d → 46.5d |
| 18 | Сбор информации о поставщиках и предложениях | 2017-06-29 A | 2017-07-19 → 2017-07-25 A (+6d) |  | 0% → 100% | 4d → none |
| 24 | **Обучение администратора и программиста** | 2017-07-28 → 2017-07-25 (-3d) | 2017-08-11 → 2017-11-07 (+88d) | 10d → 75.5d |  | 16d → 0d |
| 25 | Курсы администраторов | 2017-08-01 → 2017-07-25 (-7d) | 2017-08-08 → 2017-11-02 (+86d) |  |  | 16d → 0d |
| 26 | Курсы программистов | 2017-07-28 → 2017-07-27 (-1d) | 2017-08-01 → 2017-07-31 (-1d) |  |  | 21d → 68.5d |
| 27 | Сдача сертификационных экзаменов | 2017-08-08 → 2017-11-03 (+87d) | 2017-08-11 → 2017-11-07 (+88d) |  |  | 16d → 0d |
| 28 | Обучение завершено | 2017-08-11 → 2017-11-07 (+88d) | 2017-08-11 → 2017-11-07 (+88d) |  |  | 16d → 0d |
| 29 | **Монтаж локальной сети** | 2017-09-04 → 2017-11-08 (+65d) | 2017-11-02 → 2018-01-05 (+64d) |  |  |  |
| 30 | Установка компьютеров на рабочих местах | 2017-10-23 → 2017-12-27 (+65d) | 2017-10-26 → 2017-12-29 (+64d) |  |  |  |
| 31 | Монтаж кабеля | 2017-09-04 → 2017-11-08 (+65d) | 2017-10-03 → 2017-12-06 (+64d) |  |  |  |
| 32 | Монтаж сетевых устройств | 2017-10-03 → 2017-12-07 (+65d) | 2017-10-23 → 2017-12-26 (+64d) |  |  |  |
| 33 | Подключения кабеля к компьютерам и сетевым устройствам | 2017-10-26 → 2018-01-01 (+67d) | 2017-11-02 → 2018-01-05 (+64d) |  |  |  |
| 34 | Монтаж звершен | 2017-11-02 → 2018-01-05 (+64d) | 2017-11-02 → 2018-01-05 (+64d) |  |  |  |
| 35 | **Установка ПО на компьютеры** | 2017-11-02 → 2018-01-08 (+67d) | 2017-12-11 → 2018-02-13 (+64d) |  |  |  |
| 36 | Установка сервера | 2017-11-02 → 2018-01-08 (+67d) | 2017-11-09 → 2018-01-12 (+64d) |  |  |  |
| 37 | Создание доменов и пользователей | 2017-11-09 → 2018-01-15 (+67d) | 2017-11-20 → 2018-01-23 (+64d) |  |  |  |
| 38 | Проверка и настройка работы сети | 2017-11-20 → 2018-01-24 (+65d) | 2017-11-27 → 2018-01-30 (+64d) |  |  |  |
| 39 | Настройка сети завершена | 2017-11-27 → 2018-01-30 (+64d) | 2017-12-11 → 2018-02-13 (+64d) |  |  |  |
| 40 | **Ввод начальных данных** | 2017-12-11 → 2018-02-14 (+65d) | 2018-05-07 → 2018-07-10 (+64d) |  |  |  |
| 41 | Ввод справочников | 2017-12-11 → 2018-02-14 (+65d) | 2018-02-05 → 2018-04-10 (+64d) |  |  |  |
| 42 | Ввод начальных остатков | 2018-02-05 → 2018-04-11 (+65d) | 2018-05-07 → 2018-07-10 (+64d) |  |  |  |
| 43 | Ввод начальных данных завершен | 2018-05-07 → 2018-07-10 (+64d) | 2018-05-07 → 2018-07-10 (+64d) |  |  |  |
| 44 | **Обучение персонала** | 2017-12-11 → 2018-02-14 (+65d) | 2018-06-18 → 2018-08-21 (+64d) |  |  |  |
| 45 | Принципы работы системы | 2017-12-11 → 2018-02-14 (+65d) | 2018-02-07 → 2018-04-13 (+65d) | 5.5d → 6d |  | 37.5d → 37d |
| 46 | Изучение интерфейса | 2018-02-08 → 2018-04-16 (+67d) | 2018-02-14 → 2018-04-20 (+65d) |  |  | 37.5d → 37d |
| 47 | Изучение справочников | 2018-02-15 → 2018-04-23 (+67d) | 2018-03-14 → 2018-05-18 (+65d) |  |  | 37.5d → 37d |
| 48 | Изучение документов и журналов | 2018-05-07 → 2018-07-11 (+65d) | 2018-06-18 → 2018-08-21 (+64d) |  |  |  |
| 49 | Обучение завершено | 2018-06-18 → 2018-08-21 (+64d) | 2018-06-18 → 2018-08-21 (+64d) |  |  |  |
| 50 | **Передача в эксплуатацию** | 2018-06-18 → 2018-08-22 (+65d) | 2018-07-03 → 2018-09-05 (+64d) |  |  |  |
| 51 | Формирование тестовой отчётности | 2018-06-18 → 2018-08-22 (+65d) | 2018-06-25 → 2018-08-28 (+64d) |  |  |  |
| 52 | Акт ввода в эксплуатацию | 2018-06-25 → 2018-08-29 (+65d) | 2018-07-03 → 2018-09-05 (+64d) |  |  |  |
| 53 | Передача в эксплуатацию завершена | 2018-07-03 → 2018-09-05 (+64d) | 2018-07-03 → 2018-09-05 (+64d) |  |  |  |
| 54 | Конец проекта | 2018-07-03 → 2018-09-05 (+64d) | 2018-07-03 → 2018-09-05 (+64d) |  |  |  |

## Version 4 (saved 2016-11-27, file Тема8_Задачи.mpp)

Note of the change: first

Last finish 2018-09-05 → 2018-07-05 (-62d). Complete tasks 1 → 0.

Changed:

| ID | Task | Start | Finish | Duration | Complete | Total float |
| --- | --- | --- | --- | --- | --- | --- |
| 13 | **Составление проекта сети** |  | 2017-07-05 → 2017-07-25 (+20d) | 4.5d → 18d | 0% → 25% | 0d → none |
| 14 | Разработка архитектуры сети | 2017-06-29 → 2017-07-04 A (+5d) | 2017-07-05 → 2017-07-27 (+22d) | 4.5d → 8d | 0% → 25% | 0d → -2.5d |
| 15 | Проработка физического размещения сети | 2017-07-05 → 2017-07-27 (+22d) | 2017-07-05 → 2017-07-27 (+22d) |  |  | 0d → -2.5d |
| 16 | Проект сети завершен | 2017-07-05 → 2017-07-27 (+22d) | 2017-07-05 → 2017-07-27 (+22d) |  |  | 0d → -2.5d |
| 17 | **Приобретение компьютеров и сетевого оборудования** | 2017-06-29 A → 2017-06-29 | 2017-09-04 → 2017-09-06 (+2d) | 47d → 49.5d | 39% → 0% | 46.5d → 0d |
| 18 | Сбор информации о поставщиках и предложениях | 2017-06-29 A → 2017-06-29 | 2017-07-25 A → 2017-07-19 (-6d) |  | 100% → 0% | none → 6.5d |
| 19 | Анализ и выбор поставщика | 2017-07-25 → 2017-07-28 (+3d) | 2017-08-01 → 2017-08-03 (+2d) |  |  | 46.5d → 0d |
| 20 | Заключение договоров | 2017-08-01 → 2017-08-03 (+2d) | 2017-08-01 → 2017-08-03 (+2d) |  |  | 46.5d → 0d |
| 21 | Оплата за оборудование | 2017-08-01 → 2017-08-04 (+3d) | 2017-08-03 → 2017-08-07 (+4d) |  |  | 46.5d → 0d |
| 22 | Оформление оборудования на баланс | 2017-08-14 → 2017-08-17 (+3d) | 2017-08-28 → 2017-08-30 (+2d) |  |  | 46.5d → 0d |
| 23 | Приобретение оборудования завершено | 2017-08-28 → 2017-08-31 (+3d) | 2017-09-04 → 2017-09-06 (+2d) |  |  | 46.5d → 0d |
| 24 | **Обучение администратора и программиста** | 2017-07-25 → 2017-07-27 (+2d) | 2017-11-07 → 2017-08-15 (-84d) | 75.5d → 13.5d |  | 0d → 16d |
| 25 | Курсы администраторов | 2017-07-25 → 2017-08-04 (+10d) | 2017-11-02 → 2017-08-10 (-84d) |  |  | 0d → 16d |
| 27 | Сдача сертификационных экзаменов | 2017-11-03 → 2017-08-11 (-84d) | 2017-11-07 → 2017-08-15 (-84d) |  |  | 0d → 16d |
| 28 | Обучение завершено | 2017-11-07 → 2017-08-15 (-84d) | 2017-11-07 → 2017-08-15 (-84d) |  |  | 0d → 16d |
| 29 | **Монтаж локальной сети** | 2017-11-08 → 2017-09-07 (-62d) | 2018-01-05 → 2017-11-06 (-60d) |  |  |  |
| 30 | Установка компьютеров на рабочих местах | 2017-12-27 → 2017-10-26 (-62d) | 2017-12-29 → 2017-10-30 (-60d) |  |  |  |
| 31 | Монтаж кабеля | 2017-11-08 → 2017-09-07 (-62d) | 2017-12-06 → 2017-10-05 (-62d) |  |  |  |
| 32 | Монтаж сетевых устройств | 2017-12-07 → 2017-10-06 (-62d) | 2017-12-26 → 2017-10-25 (-62d) |  |  |  |
| 33 | Подключения кабеля к компьютерам и сетевым устройствам | 2018-01-01 → 2017-10-31 (-62d) | 2018-01-05 → 2017-11-06 (-60d) |  |  |  |
| 34 | Монтаж звершен | 2018-01-05 → 2017-11-06 (-60d) | 2018-01-05 → 2017-11-06 (-60d) |  |  |  |
| 35 | **Установка ПО на компьютеры** | 2018-01-08 → 2017-11-07 (-62d) | 2018-02-13 → 2017-12-13 (-62d) |  |  |  |
| 36 | Установка сервера | 2018-01-08 → 2017-11-07 (-62d) | 2018-01-12 → 2017-11-13 (-60d) |  |  |  |
| 37 | Создание доменов и пользователей | 2018-01-15 → 2017-11-14 (-62d) | 2018-01-23 → 2017-11-22 (-62d) |  |  |  |
| 38 | Проверка и настройка работы сети | 2018-01-24 → 2017-11-23 (-62d) | 2018-01-30 → 2017-11-29 (-62d) |  |  |  |
| 39 | Настройка сети завершена | 2018-01-30 → 2017-11-29 (-62d) | 2018-02-13 → 2017-12-13 (-62d) |  |  |  |
| 40 | **Ввод начальных данных** | 2018-02-14 → 2017-12-14 (-62d) | 2018-07-10 → 2018-05-09 (-62d) |  |  |  |
| 41 | Ввод справочников | 2018-02-14 → 2017-12-14 (-62d) | 2018-04-10 → 2018-02-07 (-62d) |  |  |  |
| 42 | Ввод начальных остатков | 2018-04-11 → 2018-02-08 (-62d) | 2018-07-10 → 2018-05-09 (-62d) |  |  |  |
| 43 | Ввод начальных данных завершен | 2018-07-10 → 2018-05-09 (-62d) | 2018-07-10 → 2018-05-09 (-62d) |  |  |  |
| 44 | **Обучение персонала** | 2018-02-14 → 2017-12-14 (-62d) | 2018-08-21 → 2018-06-20 (-62d) |  |  |  |
| 45 | Принципы работы системы | 2018-02-14 → 2017-12-14 (-62d) | 2018-04-13 → 2018-02-12 (-60d) | 6d → 5.5d |  | 37d → 37.5d |
| 46 | Изучение интерфейса | 2018-04-16 → 2018-02-12 (-63d) | 2018-04-20 → 2018-02-19 (-60d) |  |  | 37d → 37.5d |
| 47 | Изучение справочников | 2018-04-23 → 2018-02-19 (-63d) | 2018-05-18 → 2018-03-19 (-60d) |  |  | 37d → 37.5d |
| 48 | Изучение документов и журналов | 2018-07-11 → 2018-05-10 (-62d) | 2018-08-21 → 2018-06-20 (-62d) |  |  |  |
| 49 | Обучение завершено | 2018-08-21 → 2018-06-20 (-62d) | 2018-08-21 → 2018-06-20 (-62d) |  |  |  |
| 50 | **Передача в эксплуатацию** | 2018-08-22 → 2018-06-21 (-62d) | 2018-09-05 → 2018-07-05 (-62d) |  |  |  |
| 51 | Формирование тестовой отчётности | 2018-08-22 → 2018-06-21 (-62d) | 2018-08-28 → 2018-06-27 (-62d) |  |  |  |
| 52 | Акт ввода в эксплуатацию | 2018-08-29 → 2018-06-28 (-62d) | 2018-09-05 → 2018-07-05 (-62d) |  |  |  |
| 53 | Передача в эксплуатацию завершена | 2018-09-05 → 2018-07-05 (-62d) | 2018-09-05 → 2018-07-05 (-62d) |  |  |  |
| 54 | Конец проекта | 2018-09-05 → 2018-07-05 (-62d) | 2018-09-05 → 2018-07-05 (-62d) |  |  |  |

## Version 5 (saved 2016-11-27, file Тема8_Процентт.mpp)

Note of the change: first

Last finish 2018-07-05 → 2018-08-21 (+47d).

Changed:

| ID | Task | Start | Finish | Duration | Complete | Total float | Other |
| --- | --- | --- | --- | --- | --- | --- | --- |
| 1 | Начало проекта |  |  |  |  | 6.5d → 194.5d | baseline start none → 2016-09-07; baseline finish none → 2016-09-07 |
| 2 | **Выбор системы** | 2016-09-07 A | 2017-06-29 → 2017-08-17 (+49d) | 211.5d → 246.25d | 0% → 74% | 6.5d → 0d | baseline start none → 2016-09-07; baseline finish none → 2017-06-29 |
| 3 | Изучение рынка бухгалтерских систем | 2016-09-07 A | 2017-05-26 → 2017-06-06 (+11d) |  | 0% → 89% | 13.5d → 34.75d | baseline start none → 2016-09-07; baseline finish none → 2017-05-26 |
| 4 | Составление требований к бухгалтерским системам | 2016-09-07 A | 2017-06-06 → 2017-07-25 (+49d) | 42d → 76.75d | 0% → 55% | 6.5d → 0d | baseline start none → 2016-09-07; baseline finish none → 2017-06-06 |
| 5 | Консультации с фирмами-разработчиками | 2017-06-06 → 2017-07-25 (+49d) | 2017-06-20 → 2017-08-08 (+49d) |  |  | 6.5d → 0d | baseline start none → 2017-06-06; baseline finish none → 2017-06-20 |
| 6 | Принятие окончательного решения | 2017-06-20 → 2017-08-08 (+49d) | 2017-06-29 → 2017-08-17 (+49d) |  |  | 6.5d → 0d | baseline start none → 2017-06-20; baseline finish none → 2017-06-29 |
| 7 | Выбор завершен | 2017-06-29 → 2017-08-17 (+49d) | 2017-06-29 → 2017-08-17 (+49d) |  |  | 6.5d → 0d | baseline start none → 2017-06-29; baseline finish none → 2017-06-29 |
| 8 | **Приобретение программного обеспечения** | 2017-06-29 → 2017-08-17 (+49d) | 2017-07-27 → 2017-09-14 (+49d) |  |  | 24.5d → 22d | baseline start none → 2017-06-29; baseline finish none → 2017-07-27 |
| 9 | Заключение договоров | 2017-06-29 → 2017-08-17 (+49d) | 2017-06-29 → 2017-08-17 (+49d) |  |  | 24.5d → 22d | baseline start none → 2017-06-29; baseline finish none → 2017-06-29 |
| 10 | Оплата за ПО | 2017-06-29 → 2017-08-17 (+49d) | 2017-07-06 → 2017-08-24 (+49d) |  |  | 24.5d → 22d | baseline start none → 2017-06-29; baseline finish none → 2017-07-06 |
| 11 | Оформление ПО на баланс | 2017-07-13 → 2017-08-31 (+49d) | 2017-07-20 → 2017-09-07 (+49d) |  |  | 24.5d → 22d | baseline start none → 2017-07-13; baseline finish none → 2017-07-20 |
| 12 | Приобретение ПО завершено | 2017-07-20 → 2017-09-07 (+49d) | 2017-07-27 → 2017-09-14 (+49d) |  |  | 24.5d → 22d | baseline start none → 2017-07-20; baseline finish none → 2017-07-27 |
| 13 | **Составление проекта сети** | 2017-06-29 → 2017-08-17 (+49d) | 2017-07-25 → 2017-09-12 (+49d) |  | 25% → 0% | none → 0d | baseline start none → 2017-06-29; baseline finish none → 2017-07-25 |
| 14 | Разработка архитектуры сети | 2017-07-04 A → 2017-08-17 (+44d) | 2017-07-27 → 2017-09-12 (+47d) |  | 25% → 0% | -2.5d → 0d | baseline start none → 2017-06-29; baseline finish none → 2017-07-25 |
| 15 | Проработка физического размещения сети | 2017-07-27 → 2017-09-12 (+47d) | 2017-07-27 → 2017-09-12 (+47d) |  |  | -2.5d → 16d | baseline start none → 2017-07-25; baseline finish none → 2017-07-25 |
| 16 | Проект сети завершен | 2017-07-27 → 2017-09-12 (+47d) | 2017-07-27 → 2017-09-12 (+47d) |  |  | -2.5d → 16d | baseline start none → 2017-07-25; baseline finish none → 2017-07-25 |
| 17 | **Приобретение компьютеров и сетевого оборудования** | 2017-06-29 → 2017-08-17 (+49d) | 2017-09-06 → 2017-10-23 (+47d) | 49.5d → 47d |  |  | baseline start none → 2017-06-29; baseline finish none → 2017-09-04 |
| 18 | Сбор информации о поставщиках и предложениях | 2017-06-29 → 2017-08-17 (+49d) | 2017-07-19 → 2017-09-06 (+49d) |  |  | 6.5d → 4d | baseline start none → 2017-06-29; baseline finish none → 2017-07-19 |
| 19 | Анализ и выбор поставщика | 2017-07-28 → 2017-09-12 (+46d) | 2017-08-03 → 2017-09-19 (+47d) |  |  |  | baseline start none → 2017-07-25; baseline finish none → 2017-08-01 |
| 20 | Заключение договоров | 2017-08-03 → 2017-09-19 (+47d) | 2017-08-03 → 2017-09-19 (+47d) |  |  |  | baseline start none → 2017-08-01; baseline finish none → 2017-08-01 |
| 21 | Оплата за оборудование | 2017-08-04 → 2017-09-19 (+46d) | 2017-08-07 → 2017-09-21 (+45d) |  |  |  | baseline start none → 2017-08-01; baseline finish none → 2017-08-03 |
| 22 | Оформление оборудования на баланс | 2017-08-17 → 2017-10-02 (+46d) | 2017-08-30 → 2017-10-16 (+47d) |  |  |  | baseline start none → 2017-08-14; baseline finish none → 2017-08-28 |
| 23 | Приобретение оборудования завершено | 2017-08-31 → 2017-10-16 (+46d) | 2017-09-06 → 2017-10-23 (+47d) |  |  |  | baseline start none → 2017-08-28; baseline finish none → 2017-09-04 |
| 24 | **Обучение администратора и программиста** | 2017-07-27 → 2017-09-14 (+49d) | 2017-08-15 → 2017-09-29 (+45d) | 13.5d → 11d |  |  | baseline start none → 2017-07-27; baseline finish none → 2017-08-11 |
| 25 | Курсы администраторов | 2017-08-04 → 2017-09-19 (+46d) | 2017-08-10 → 2017-09-26 (+47d) |  |  |  | baseline start none → 2017-08-01; baseline finish none → 2017-08-08 |
| 26 | Курсы программистов | 2017-07-27 → 2017-09-14 (+49d) | 2017-07-31 → 2017-09-18 (+49d) |  |  | 24.5d → 22d | baseline start none → 2017-07-27; baseline finish none → 2017-07-31 |
| 27 | Сдача сертификационных экзаменов | 2017-08-11 → 2017-09-26 (+46d) | 2017-08-15 → 2017-09-29 (+45d) |  |  |  | baseline start none → 2017-08-08; baseline finish none → 2017-08-11 |
| 28 | Обучение завершено | 2017-08-15 → 2017-09-29 (+45d) | 2017-08-15 → 2017-09-29 (+45d) |  |  |  | baseline start none → 2017-08-11; baseline finish none → 2017-08-11 |
| 29 | **Монтаж локальной сети** | 2017-09-07 → 2017-10-23 (+46d) | 2017-11-06 → 2017-12-21 (+45d) |  |  |  | baseline start none → 2017-09-04; baseline finish none → 2017-11-02 |
| 30 | Установка компьютеров на рабочих местах | 2017-10-26 → 2017-12-11 (+46d) | 2017-10-30 → 2017-12-14 (+45d) |  |  |  | baseline start none → 2017-10-23; baseline finish none → 2017-10-26 |
| 31 | Монтаж кабеля | 2017-09-07 → 2017-10-23 (+46d) | 2017-10-05 → 2017-11-21 (+47d) |  |  |  | baseline start none → 2017-09-04; baseline finish none → 2017-10-03 |
| 32 | Монтаж сетевых устройств | 2017-10-06 → 2017-11-21 (+46d) | 2017-10-25 → 2017-12-11 (+47d) |  |  |  | baseline start none → 2017-10-03; baseline finish none → 2017-10-23 |
| 33 | Подключения кабеля к компьютерам и сетевым устройствам | 2017-10-31 → 2017-12-14 (+44d) | 2017-11-06 → 2017-12-21 (+45d) |  |  |  | baseline start none → 2017-10-26; baseline finish none → 2017-11-02 |
| 34 | Монтаж звершен | 2017-11-06 → 2017-12-21 (+45d) | 2017-11-06 → 2017-12-21 (+45d) |  |  |  | baseline start none → 2017-11-02; baseline finish none → 2017-11-02 |
| 35 | **Установка ПО на компьютеры** | 2017-11-07 → 2017-12-21 (+44d) | 2017-12-13 → 2018-01-29 (+47d) |  |  |  | baseline start none → 2017-11-02; baseline finish none → 2017-12-11 |
| 36 | Установка сервера | 2017-11-07 → 2017-12-21 (+44d) | 2017-11-13 → 2017-12-28 (+45d) |  |  |  | baseline start none → 2017-11-02; baseline finish none → 2017-11-09 |
| 37 | Создание доменов и пользователей | 2017-11-14 → 2017-12-28 (+44d) | 2017-11-22 → 2018-01-08 (+47d) |  |  |  | baseline start none → 2017-11-09; baseline finish none → 2017-11-20 |
| 38 | Проверка и настройка работы сети | 2017-11-23 → 2018-01-08 (+46d) | 2017-11-29 → 2018-01-15 (+47d) |  |  |  | baseline start none → 2017-11-20; baseline finish none → 2017-11-27 |
| 39 | Настройка сети завершена | 2017-11-29 → 2018-01-15 (+47d) | 2017-12-13 → 2018-01-29 (+47d) |  |  |  | baseline start none → 2017-11-27; baseline finish none → 2017-12-11 |
| 40 | **Ввод начальных данных** | 2017-12-14 → 2018-01-29 (+46d) | 2018-05-09 → 2018-06-25 (+47d) |  |  |  | baseline start none → 2017-12-11; baseline finish none → 2018-05-07 |
| 41 | Ввод справочников | 2017-12-14 → 2018-01-29 (+46d) | 2018-02-07 → 2018-03-26 (+47d) |  |  |  | baseline start none → 2017-12-11; baseline finish none → 2018-02-05 |
| 42 | Ввод начальных остатков | 2018-02-08 → 2018-03-26 (+46d) | 2018-05-09 → 2018-06-25 (+47d) |  |  |  | baseline start none → 2018-02-05; baseline finish none → 2018-05-07 |
| 43 | Ввод начальных данных завершен | 2018-05-09 → 2018-06-25 (+47d) | 2018-05-09 → 2018-06-25 (+47d) |  |  |  | baseline start none → 2018-05-07; baseline finish none → 2018-05-07 |
| 44 | **Обучение персонала** | 2017-12-14 → 2018-01-29 (+46d) | 2018-06-20 → 2018-08-06 (+47d) |  |  |  | baseline start none → 2017-12-11; baseline finish none → 2018-06-18 |
| 45 | Принципы работы системы | 2017-12-14 → 2018-01-29 (+46d) | 2018-02-12 → 2018-03-29 (+45d) | 5.5d → 6d |  | 37.5d → 37d | baseline start none → 2017-12-11; baseline finish none → 2018-02-07 |
| 46 | Изучение интерфейса | 2018-02-12 → 2018-03-29 (+45d) | 2018-02-19 → 2018-04-05 (+45d) |  |  | 37.5d → 37d | baseline start none → 2018-02-08; baseline finish none → 2018-02-14 |
| 47 | Изучение справочников | 2018-02-19 → 2018-04-05 (+45d) | 2018-03-19 → 2018-05-03 (+45d) |  |  | 37.5d → 37d | baseline start none → 2018-02-15; baseline finish none → 2018-03-14 |
| 48 | Изучение документов и журналов | 2018-05-10 → 2018-06-25 (+46d) | 2018-06-20 → 2018-08-06 (+47d) |  |  |  | baseline start none → 2018-05-07; baseline finish none → 2018-06-18 |
| 49 | Обучение завершено | 2018-06-20 → 2018-08-06 (+47d) | 2018-06-20 → 2018-08-06 (+47d) |  |  |  | baseline start none → 2018-06-18; baseline finish none → 2018-06-18 |
| 50 | **Передача в эксплуатацию** | 2018-06-21 → 2018-08-06 (+46d) | 2018-07-05 → 2018-08-21 (+47d) |  |  |  | baseline start none → 2018-06-18; baseline finish none → 2018-07-03 |
| 51 | Формирование тестовой отчётности | 2018-06-21 → 2018-08-06 (+46d) | 2018-06-27 → 2018-08-13 (+47d) |  |  |  | baseline start none → 2018-06-18; baseline finish none → 2018-06-25 |
| 52 | Акт ввода в эксплуатацию | 2018-06-28 → 2018-08-13 (+46d) | 2018-07-05 → 2018-08-21 (+47d) |  |  |  | baseline start none → 2018-06-25; baseline finish none → 2018-07-03 |
| 53 | Передача в эксплуатацию завершена | 2018-07-05 → 2018-08-21 (+47d) | 2018-07-05 → 2018-08-21 (+47d) |  |  |  | baseline start none → 2018-07-03; baseline finish none → 2018-07-03 |
| 54 | Конец проекта | 2018-07-05 → 2018-08-21 (+47d) | 2018-07-05 → 2018-08-21 (+47d) |  |  |  | baseline start none → 2018-07-03; baseline finish none → 2018-07-03 |

## Version 6 (data date 2018-08-21, saved 2016-11-27, file Тема8_Анализ.mpp)

Note of the change: first

Last finish stays 2018-08-21. Complete tasks 0 → 13.

Changed:

| ID | Task | Start | Finish | Complete | Total float |
| --- | --- | --- | --- | --- | --- |
| 2 | **Выбор системы** |  |  | 74% → 99% | 0d → 35.8d |
| 3 | Изучение рынка бухгалтерских систем |  | 2017-06-06 A | 89% → 100% | 34.75d → none |
| 4 | Составление требований к бухгалтерским системам |  | 2017-07-25 A | 55% → 100% | 0d → none |
| 5 | Консультации с фирмами-разработчиками | 2017-07-25 A | 2017-08-08 A | 0% → 100% | 0d → none |
| 6 | Принятие окончательного решения | 2017-08-08 A | 2017-08-17 A | 0% → 100% | 0d → none |
| 7 | Выбор завершен |  |  | 0% → 100% | 0d → 35.8d |
| 8 | **Приобретение программного обеспечения** | 2017-08-17 A |  | 0% → 70% | 22d → 243d |
| 9 | Заключение договоров | 2017-08-17 A | 2017-08-17 A | 0% → 100% | 22d → none |
| 10 | Оплата за ПО | 2017-08-17 A | 2017-08-24 A | 0% → 100% | 22d → none |
| 11 | Оформление ПО на баланс | 2017-08-31 A | 2017-09-07 A | 0% → 100% | 22d → none |
| 12 | Приобретение ПО завершено | 2017-09-07 A |  | 0% → 10% | 22d → 243d |
| 13 | **Составление проекта сети** | 2017-08-17 A |  | 0% → 60% | 0d → 21d |
| 14 | Разработка архитектуры сети | 2017-08-17 A |  | 0% → 60% | 0d → 21d |
| 17 | **Приобретение компьютеров и сетевого оборудования** | 2017-08-17 A |  | 0% → 60% |  |
| 18 | Сбор информации о поставщиках и предложениях | 2017-08-17 A | 2017-09-06 A | 0% → 100% | 4d → none |
| 19 | Анализ и выбор поставщика | 2017-09-12 A | 2017-09-19 A | 0% → 100% | 0d → none |
| 20 | Заключение договоров | 2017-09-19 A | 2017-09-19 A | 0% → 100% | 0d → none |
| 21 | Оплата за оборудование | 2017-09-19 A | 2017-09-21 A | 0% → 100% | 0d → none |
| 22 | Оформление оборудования на баланс | 2017-10-02 A |  | 0% → 6% |  |
| 24 | **Обучение администратора и программиста** | 2017-09-14 A |  | 0% → 70% |  |
| 25 | Курсы администраторов | 2017-09-19 A |  | 0% → 99% |  |
| 26 | Курсы программистов | 2017-09-14 A | 2017-09-18 A | 0% → 100% | 22d → none |
